# Cronograma_00

Schedule from MS Project, 2022-11-17 to 2023-02-23, costs in R$.

## Calendars

- Standard: Mon-Fri 08:00-12:00, 13:00-17:00; Sat-Sun off.

## Resources

| Resource | Rate | Cost per use |
| --- | --- | --- |
| Caio | 100 | 100 |
| Leonardo | 100 | 100 |
| Luigi | 100 | 100 |
| Vinicius | 100 | 100 |

## Schedule

| ID | WBS | Task | Duration | Start | Finish | Predecessors | Baseline start | Baseline finish | Baseline duration | Total slack | Resources | Work | Cost | Baseline cost |
| --- | --- | --- | --- | --- | --- | --- | --- | --- | --- | --- | --- | --- | --- | --- |
| 1 | 1 | **Projeto plataforma defesa civil** | 70.85d? | 2022-11-17 | 2023-02-23 |  | 2022-11-17 | 2023-02-23 | 70.85d? | 0d |  | 410h | 45,825 | 45,825 |
| 2 | 1.1 | **Fase de prospecção** | 4d? | 2022-11-17 | 2022-11-22 |  | 2022-11-17 | 2022-11-22 | 4d? | 0d |  | 19h | 2,300 | 2,300 |
| 3 | 1.1.1 | **PTEC** | 3.25d? | 2022-11-17 | 2022-11-22 |  | 2022-11-17 | 2022-11-22 | 3.25d? | 0d |  | 13h | 1,300 | 1,300 |
| 4 | 1.1.1.1 | Estudar domínio de aplicação | 1d? | 2022-11-17 | 2022-11-17 |  | 2022-11-17 | 2022-11-17 | 1d? | 0d |  | 3h |  |  |
| 5 | 1.1.1.2 | Reunir-se com fornecedor de requisitos | 0.12d? | 2022-11-18 | 2022-11-18 | 4 | 2022-11-18 | 2022-11-18 | 0.12d? | 0d | Caio | 1h | 200 | 200 |
| 6 | 1.1.1.3 | Redigir PTEC | 0.88d? | 2022-11-18 | 2022-11-18 | 5 | 2022-11-18 | 2022-11-18 | 0.88d? | 0d | Caio | 7h | 800 | 800 |
| 7 | 1.1.1.4 | Revisar PTEC | 0.25d? | 2022-11-21 | 2022-11-21 | 6 | 2022-11-21 | 2022-11-21 | 0.25d? | 0d | Leonardo | 2h | 300 | 300 |
| 8 | 1.1.1.5 | Aprovar PTEC | 1d? | 2022-11-21 | 2022-11-22 | 7 | 2022-11-21 | 2022-11-22 | 1d? | 0d |  |  |  |  |
| 9 | 1.1.2 | **Estimativa preliminar de tamanho** | 0.38d | 2022-11-22 | 2022-11-22 |  | 2022-11-22 | 2022-11-22 | 0.38d | 0d |  | 3h | 500 | 500 |
| 10 | 1.1.2.1 | Estimar tamanho do projeto | 0.25d | 2022-11-22 | 2022-11-22 | 8 | 2022-11-22 | 2022-11-22 | 0.25d | 0d | Luigi | 2h | 300 | 300 |
| 11 | 1.1.2.2 | Revisar estimativa do projeto | 0.12d | 2022-11-22 | 2022-11-22 | 10 | 2022-11-22 | 2022-11-22 | 0.12d | 0d | Vinicius | 1h | 200 | 200 |
| 12 | 1.1.3 | **Cronograma e orçamento preliminares** | 0.38d | 2022-11-22 | 2022-11-22 |  | 2022-11-22 | 2022-11-22 | 0.38d | 0d |  | 3h | 500 | 500 |
| 13 | 1.1.3.1 | Elaborar orçamento e cronograma | 0.25d | 2022-11-22 | 2022-11-22 | 11 | 2022-11-22 | 2022-11-22 | 0.25d | 0d | Caio | 2h | 300 | 300 |
| 14 | 1.1.3.2 | Revisar cronograma e orçamento | 0.12d | 2022-11-22 | 2022-11-22 | 13 | 2022-11-22 | 2022-11-22 | 0.12d | 0d | Leonardo | 1h | 200 | 200 |
| 15 | 1.2 | **Análise** | 10d? | 2022-11-23 | 2022-12-06 |  | 2022-11-23 | 2022-12-06 | 10d? | 0d |  | 67h | 7,325 | 7,325 |
| 16 | 1.2.1 | **DRE** | 5.5d? | 2022-11-23 | 2022-11-30 |  | 2022-11-23 | 2022-11-30 | 5.5d? | 0d |  | 41h | 4,450 | 4,450 |
| 17 | 1.2.1.1 | Reunir-se com o cliente | 0.5d? | 2022-11-23 | 2022-11-23 | 14 | 2022-11-23 | 2022-11-23 | 0.5d? | 0d | Luigi [50%] | 2h | 250 | 250 |
| 18 | 1.2.1.2 | Elaborar DRE | 3d? | 2022-11-23 | 2022-11-28 | 17 | 2022-11-23 | 2022-11-28 | 3d? | 0d | Vinicius | 24h | 2,500 | 2,500 |
| 19 | 1.2.1.3 | Realizar prototipação | 0.88d? | 2022-11-28 | 2022-11-29 | 18 | 2022-11-28 | 2022-11-29 | 0.88d? | 62.48d | Caio | 7h | 800 | 800 |
| 20 | 1.2.1.4 | Revisar DRE | 1d? | 2022-11-28 | 2022-11-29 | 18 | 2022-11-28 | 2022-11-29 | 1d? | 0d | Leonardo | 8h | 900 | 900 |
| 21 | 1.2.1.5 | Submeter DRE para aprovação | 1d? | 2022-11-29 | 2022-11-30 | 20 | 2022-11-29 | 2022-11-30 | 1d? | 0d |  |  |  |  |
| 22 | 1.2.2 | **EAP** | 2.25d? | 2022-11-30 | 2022-12-02 |  | 2022-11-30 | 2022-12-02 | 2.25d? | 0d |  | 13h | 1,437.5 | 1,437.5 |
| 23 | 1.2.2.1 | Elaborar EAP | 1.25d? | 2022-11-30 | 2022-12-01 | 21 | 2022-11-30 | 2022-12-01 | 1.25d? | 0d | Caio | 10h | 1,100 | 1,100 |
| 24 | 1.2.2.2 | Revisar EAP | 1d? | 2022-12-01 | 2022-12-02 | 23 | 2022-12-01 | 2022-12-02 | 1d? | 0d | Vinicius [37.5%] | 3h | 337.5 | 337.5 |

| ID | WBS | Task | Duration | Start | Finish | Predecessors | Baseline start | Baseline finish | Baseline duration | Total slack | Resources | Work | Cost | Baseline cost |
| --- | --- | --- | --- | --- | --- | --- | --- | --- | --- | --- | --- | --- | --- | --- |
| 25 | 1.2.3 | **MRB** | 2.25d? | 2022-12-02 | 2022-12-06 |  | 2022-12-02 | 2022-12-06 | 2.25d? | 0d |  | 13h | 1,437.5 | 1,437.5 |
| 26 | 1.2.3.1 | Elaborar MRB | 1.25d? | 2022-12-02 | 2022-12-05 | 24 | 2022-12-02 | 2022-12-05 | 1.25d? | 0d | Leonardo | 10h | 1,100 | 1,100 |
| 27 | 1.2.3.2 | Revisar MRB | 1d? | 2022-12-06 | 2022-12-06 | 26 | 2022-12-06 | 2022-12-06 | 1d? | 0d | Luigi [37.5%] | 3h | 337.5 | 337.5 |
| 28 | 1.3 | **Projeto E planejamento** | 20d? | 2022-12-07 | 2023-01-03 |  | 2022-12-07 | 2023-01-03 | 20d? | 0d |  | 44h | 4,700 | 4,700 |
| 29 | 1.3.1 | **Diagrama de classe** | 3d? | 2022-12-07 | 2022-12-09 |  | 2022-12-07 | 2022-12-09 | 3d? | 0d |  | 7h | 750 | 750 |
| 30 | 1.3.1.1 | Elaborar diagrama de classe | 2d? | 2022-12-07 | 2022-12-08 | 27 | 2022-12-07 | 2022-12-08 | 2d? | 0d | Caio [37.5%] | 6h | 637.5 | 637.5 |
| 31 | 1.3.1.2 | Revisar diagrama de classe | 1d? | 2022-12-09 | 2022-12-09 | 30 | 2022-12-09 | 2022-12-09 | 1d? | 0d | Leonardo [12.5%] | 1h | 112.5 | 112.5 |
| 32 | 1.3.2 | **Diagrama de arquitetura** | 3d? | 2022-12-12 | 2022-12-14 |  | 2022-12-12 | 2022-12-14 | 3d? | 0d |  | 7h | 750 | 750 |
| 33 | 1.3.2.1 | Elaborar diagrama de arquitetura | 2d? | 2022-12-12 | 2022-12-13 | 31 | 2022-12-12 | 2022-12-13 | 2d? | 0d | Leonardo [37.5%] | 6h | 637.5 | 637.5 |
| 34 | 1.3.2.2 | Revisar diagrama de arquitetura | 1d? | 2022-12-14 | 2022-12-14 | 33 | 2022-12-14 | 2022-12-14 | 1d? | 0d | Luigi [12.5%] | 1h | 112.5 | 112.5 |
| 35 | 1.3.3 | **Diagrama de implantação** | 4d? | 2022-12-15 | 2022-12-20 |  | 2022-12-15 | 2022-12-20 | 4d? | 0d |  | 8h | 850 | 850 |
| 36 | 1.3.3.1 | Elaborar diagrama de implantação | 2d? | 2022-12-15 | 2022-12-16 | 34 | 2022-12-15 | 2022-12-16 | 2d? | 0d | Vinicius [37.5%] | 6h | 637.5 | 637.5 |
| 37 | 1.3.3.2 | Revisar diagrama de implantação | 2d? | 2022-12-19 | 2022-12-20 | 36 | 2022-12-19 | 2022-12-20 | 2d? | 0d | Caio [12.5%] | 2h | 212.5 | 212.5 |
| 38 | 1.3.4 | **Diagrama do banco de dados** | 3d? | 2022-12-21 | 2022-12-23 |  | 2022-12-21 | 2022-12-23 | 3d? | 0d |  | 7h | 750 | 750 |
| 39 | 1.3.4.1 | Elaborar diagrama do banco de dados | 2d? | 2022-12-21 | 2022-12-22 | 37 | 2022-12-21 | 2022-12-22 | 2d? | 0d | Vinicius [37.5%] | 6h | 637.5 | 637.5 |
| 40 | 1.3.4.2 | Elaborar diagrama de processos | 1d? | 2022-12-23 | 2022-12-23 | 39 | 2022-12-23 | 2022-12-23 | 1d? | 0d | Caio [12.5%] | 1h | 112.5 | 112.5 |
| 41 | 1.3.5 | **Diagrama de processos** | 3d? | 2022-12-26 | 2022-12-28 |  | 2022-12-26 | 2022-12-28 | 3d? | 0d |  | 7h | 750 | 750 |
| 42 | 1.3.5.1 | Elaborar diagrama de processos | 2d? | 2022-12-26 | 2022-12-27 | 40 | 2022-12-26 | 2022-12-27 | 2d? | 0d | Leonardo [37.5%] | 6h | 637.5 | 637.5 |
| 43 | 1.3.5.2 | Revisar diagrama de processos | 1d? | 2022-12-28 | 2022-12-28 | 42 | 2022-12-28 | 2022-12-28 | 1d? | 0d | Luigi [12.5%] | 1h | 112.5 | 112.5 |
| 44 | 1.3.6 | **Modelo entidade relacionamento** | 4d? | 2022-12-29 | 2023-01-03 |  | 2022-12-29 | 2023-01-03 | 4d? | 0d |  | 8h | 850 | 850 |
| 45 | 1.3.6.1 | Elaborar ER | 2d? | 2022-12-29 | 2022-12-30 | 43 | 2022-12-29 | 2022-12-30 | 2d? | 0d | Vinicius [37.5%] | 6h | 637.5 | 637.5 |
| 46 | 1.3.6.2 | Revisar ER | 2d? | 2023-01-02 | 2023-01-03 | 45 | 2023-01-02 | 2023-01-03 | 2d? | 0d | Caio [12.5%] | 2h | 212.5 | 212.5 |
| 47 | 1.4 | **Desenvolvimento** | 29.23d? | 2023-01-04 | 2023-02-14 |  | 2023-01-04 | 2023-02-14 | 29.23d? | 0d |  | 228h | 25,600 | 25,600 |
| 48 | 1.4.1 | **Release 00** | 7d? | 2023-01-04 | 2023-01-12 |  | 2023-01-04 | 2023-01-12 | 7d? | 0d |  | 56h | 6,400 | 6,400 |
| 49 | 1.4.1.1 | **RFC01** | 3d? | 2023-01-04 | 2023-01-06 |  | 2023-01-04 | 2023-01-06 | 3d? | 0d |  | 24h | 2,800 | 2,800 |
| 50 | 1.4.1.1.1 | RFS01 | 0.75d? | 2023-01-04 | 2023-01-04 | 46 | 2023-01-04 | 2023-01-04 | 0.75d? | 0d | Caio | 6h | 700 | 700 |
| 51 | 1.4.1.1.2 | RFS02 | 0.75d? | 2023-01-04 | 2023-01-05 | 50 | 2023-01-04 | 2023-01-05 | 0.75d? | 0d | Luigi | 6h | 700 | 700 |
| 52 | 1.4.1.1.3 | RFS03 | 0.75d? | 2023-01-05 | 2023-01-06 | 51 | 2023-01-05 | 2023-01-06 | 0.75d? | 0d | Leonardo | 6h | 700 | 700 |
| 53 | 1.4.1.1.4 | RFS04 | 0.75d? | 2023-01-06 | 2023-01-06 | 52 | 2023-01-06 | 2023-01-06 | 0.75d? | 0d | Vinicius | 6h | 700 | 700 |

| ID | WBS | Task | Duration | Start | Finish | Predecessors | Baseline start | Baseline finish | Baseline duration | Total slack | Resources | Work | Cost | Baseline cost |
| --- | --- | --- | --- | --- | --- | --- | --- | --- | --- | --- | --- | --- | --- | --- |
| 54 | 1.4.1.2 | **RFC02** | 4d? | 2023-01-09 | 2023-01-12 |  | 2023-01-09 | 2023-01-12 | 4d? | 0d |  | 32h | 3,600 | 3,600 |
| 55 | 1.4.1.2.1 | RFS05 | 1d? | 2023-01-09 | 2023-01-09 | 53 | 2023-01-09 | 2023-01-09 | 1d? | 0d | Caio | 8h | 900 | 900 |
| 56 | 1.4.1.2.2 | RFS06 | 1d? | 2023-01-10 | 2023-01-10 | 55 | 2023-01-10 | 2023-01-10 | 1d? | 0d | Luigi | 8h | 900 | 900 |
| 57 | 1.4.1.2.3 | RFS07 | 1d? | 2023-01-11 | 2023-01-11 | 56 | 2023-01-11 | 2023-01-11 | 1d? | 0d | Leonardo | 8h | 900 | 900 |
| 58 | 1.4.1.2.4 | RFS08 | 1d? | 2023-01-12 | 2023-01-12 | 57 | 2023-01-12 | 2023-01-12 | 1d? | 0d | Vinicius | 8h | 900 | 900 |
| 59 | 1.4.2 | **Testes** | 4.6d? | 2023-01-09 | 2023-01-13 |  | 2023-01-09 | 2023-01-13 | 4.6d? | 4d |  | 6h | 700 | 700 |
| 60 | 1.4.2.1 | **Testar RFC01** | 1d? | 2023-01-09 | 2023-01-09 |  | 2023-01-09 | 2023-01-09 | 1d? | 32.85d |  | 3h | 337.5 | 337.5 |
| 61 | 1.4.2.1.1 | Realizar casos de teste | 1d? | 2023-01-09 | 2023-01-09 | 53 | 2023-01-09 | 2023-01-09 | 1d? | 32.85d | Vinicius [37.5%] | 3h | 337.5 | 337.5 |
| 62 | 1.4.2.2 | **Testar RFC02** | 0.6d? | 2023-01-13 | 2023-01-13 |  | 2023-01-13 | 2023-01-13 | 0.6d? | 0d |  | 3h | 362.5 | 362.5 |
| 63 | 1.4.2.2.1 | Realizar casos de teste | 0.6d? | 2023-01-13 | 2023-01-13 | 58 | 2023-01-13 | 2023-01-13 | 0.6d? | 0d | Leonardo [62.5%] | 3h | 362.5 | 362.5 |
| 64 | 1.4.3 | **Release 01** | 7d? | 2023-01-13 | 2023-01-24 |  | 2023-01-13 | 2023-01-24 | 7d? | 0d |  | 56h | 6,400 | 6,400 |
| 65 | 1.4.3.1 | **RCF03** | 3.5d? | 2023-01-13 | 2023-01-19 |  | 2023-01-13 | 2023-01-19 | 3.5d? | 0d |  | 28h | 3,200 | 3,200 |
| 66 | 1.4.3.1.1 | RFS09 | 0.88d? | 2023-01-13 | 2023-01-16 | 63 | 2023-01-13 | 2023-01-16 | 0.88d? | 0d | Caio | 7h | 800 | 800 |
| 67 | 1.4.3.1.2 | RFS10 | 0.88d? | 2023-01-16 | 2023-01-17 | 66 | 2023-01-16 | 2023-01-17 | 0.88d? | 0d | Luigi | 7h | 800 | 800 |
| 68 | 1.4.3.1.3 | RFS11 | 0.88d? | 2023-01-17 | 2023-01-18 | 67 | 2023-01-17 | 2023-01-18 | 0.88d? | 0d | Leonardo | 7h | 800 | 800 |
| 69 | 1.4.3.1.4 | RFS12 | 0.88d? | 2023-01-18 | 2023-01-19 | 68 | 2023-01-18 | 2023-01-19 | 0.88d? | 0d | Vinicius | 7h | 800 | 800 |
| 70 | 1.4.3.2 | **RCF04** | 3.5d? | 2023-01-19 | 2023-01-24 |  | 2023-01-19 | 2023-01-24 | 3.5d? | 0d |  | 28h | 3,200 | 3,200 |
| 71 | 1.4.3.2.1 | RFS13 | 0.88d? | 2023-01-19 | 2023-01-19 | 69 | 2023-01-19 | 2023-01-19 | 0.88d? | 0d | Caio | 7h | 800 | 800 |
| 72 | 1.4.3.2.2 | RFS14 | 0.88d? | 2023-01-19 | 2023-01-20 | 71 | 2023-01-19 | 2023-01-20 | 0.88d? | 0d | Leonardo | 7h | 800 | 800 |
| 73 | 1.4.3.2.3 | RFS15 | 0.88d? | 2023-01-20 | 2023-01-23 | 72 | 2023-01-20 | 2023-01-23 | 0.88d? | 0d | Luigi | 7h | 800 | 800 |
| 74 | 1.4.3.2.4 | RFS16 | 0.88d? | 2023-01-23 | 2023-01-24 | 73 | 2023-01-23 | 2023-01-24 | 0.88d? | 0d | Vinicius | 7h | 800 | 800 |
| 75 | 1.4.4 | **Testes** | 3.62d? | 2023-01-19 | 2023-01-24 |  | 2023-01-19 | 2023-01-24 | 3.62d? | 3.5d |  | 2h | 400 | 400 |
| 76 | 1.4.4.1 | **Testar RFC03** | 0.12d? | 2023-01-19 | 2023-01-19 |  | 2023-01-19 | 2023-01-19 | 0.12d? | 25.62d |  | 1h | 200 | 200 |
| 77 | 1.4.4.1.1 | Realizar casos de teste | 0.12d? | 2023-01-19 | 2023-01-19 | 69 | 2023-01-19 | 2023-01-19 | 0.12d? | 25.62d | Vinicius | 1h | 200 | 200 |

| ID | WBS | Task | Duration | Start | Finish | Predecessors | Baseline start | Baseline finish | Baseline duration | Total slack | Resources | Work | Cost | Baseline cost |
| --- | --- | --- | --- | --- | --- | --- | --- | --- | --- | --- | --- | --- | --- | --- |
| 78 | 1.4.4.2 | **Testar RFC04** | 0.12d? | 2023-01-24 | 2023-01-24 |  | 2023-01-24 | 2023-01-24 | 0.12d? | 0d |  | 1h | 200 | 200 |
| 79 | 1.4.4.2.1 | Realizar casos de teste | 0.12d? | 2023-01-24 | 2023-01-24 | 74 | 2023-01-24 | 2023-01-24 | 0.12d? | 0d | Leonardo | 1h | 200 | 200 |
| 80 | 1.4.5 | **Release 02** | 7.75d? | 2023-01-24 | 2023-02-03 |  | 2023-01-24 | 2023-02-03 | 7.75d? | 0d |  | 58h | 6,425 | 6,425 |
| 81 | 1.4.5.1 | **RFC05** | 4d? | 2023-01-24 | 2023-01-30 |  | 2023-01-24 | 2023-01-30 | 4d? | 0d |  | 32h | 3,600 | 3,600 |
| 82 | 1.4.5.1.1 | RFS17 | 1d? | 2023-01-24 | 2023-01-25 | 79 | 2023-01-24 | 2023-01-25 | 1d? | 0d | Caio | 8h | 900 | 900 |
| 83 | 1.4.5.1.2 | RFS18 | 1d? | 2023-01-25 | 2023-01-26 | 82 | 2023-01-25 | 2023-01-26 | 1d? | 0d | Luigi | 8h | 900 | 900 |
| 84 | 1.4.5.1.3 | RFS19 | 1d? | 2023-01-26 | 2023-01-27 | 83 | 2023-01-26 | 2023-01-27 | 1d? | 0d | Leonardo | 8h | 900 | 900 |
| 85 | 1.4.5.1.4 | RFS20 | 1d? | 2023-01-27 | 2023-01-30 | 84 | 2023-01-27 | 2023-01-30 | 1d? | 0d | Vinicius | 8h | 900 | 900 |
| 86 | 1.4.5.2 | **RFS21** | 2.75d? | 2023-01-30 | 2023-02-02 |  | 2023-01-30 | 2023-02-02 | 2.75d? | 0d |  | 22h | 2,300 | 2,300 |
| 87 | 1.4.5.2.1 | Relatorio 1 | 2.75d? | 2023-01-30 | 2023-02-02 | 85 | 2023-01-30 | 2023-02-02 | 2.75d? | 0d | Caio | 22h | 2,300 | 2,300 |
| 88 | 1.4.5.3 | **Testes** | 3.75d? | 2023-01-30 | 2023-02-03 |  | 2023-01-30 | 2023-02-03 | 3.75d? | 2.75d |  | 4h | 525 | 525 |
| 89 | 1.4.5.3.1 | **Testar RFC05** | 0.25d? | 2023-01-30 | 2023-01-30 |  | 2023-01-30 | 2023-01-30 | 0.25d? | 17.88d |  | 2h | 300 | 300 |
| 90 | 1.4.5.3.1.1 | Realizar casos de teste | 0.25d? | 2023-01-30 | 2023-01-30 | 85 | 2023-01-30 | 2023-01-30 | 0.25d? | 17.88d | Vinicius | 2h | 300 | 300 |
| 91 | 1.4.5.3.2 | **Testar RFS21** | 1d? | 2023-02-02 | 2023-02-03 |  | 2023-02-02 | 2023-02-03 | 1d? | 0d |  | 2h | 225 | 225 |
| 92 | 1.4.5.3.2.1 | Realizar casos de teste | 1d? | 2023-02-02 | 2023-02-03 | 87 | 2023-02-02 | 2023-02-03 | 1d? | 0d | Vinicius [25%] | 2h | 225 | 225 |
| 93 | 1.4.6 | **Release 03** | 6.75d? | 2023-02-03 | 2023-02-14 |  | 2023-02-03 | 2023-02-14 | 6.75d? | 0d |  | 50h | 5,275 | 5,275 |
| 94 | 1.4.6.1 | **RFS22** | 2.88d? | 2023-02-03 | 2023-02-08 |  | 2023-02-03 | 2023-02-08 | 2.88d? | 0d |  | 23h | 2,400 | 2,400 |
| 95 | 1.4.6.1.1 | Relatorio 2 | 2.88d? | 2023-02-03 | 2023-02-08 | 92 | 2023-02-03 | 2023-02-08 | 2.88d? | 0d | Caio | 23h | 2,400 | 2,400 |
| 96 | 1.4.6.2 | **RFS 23** | 2.88d | 2023-02-08 | 2023-02-13 |  | 2023-02-08 | 2023-02-13 | 2.88d | 0d |  | 23h | 2,400 | 2,400 |
| 97 | 1.4.6.2.1 | Emitir alerta por email | 2.88d | 2023-02-08 | 2023-02-13 | 95 | 2023-02-08 | 2023-02-13 | 2.88d | 0d | Vinicius | 23h | 2,400 | 2,400 |
| 98 | 1.4.6.3 | **Testes** | 3.88d? | 2023-02-08 | 2023-02-14 |  | 2023-02-08 | 2023-02-14 | 3.88d? | 2.88d |  | 4h | 475 | 475 |
| 99 | 1.4.6.3.1 | **Testar RFS22** | 0.5d? | 2023-02-08 | 2023-02-08 |  | 2023-02-08 | 2023-02-08 | 0.5d? | 11d |  | 2h | 250 | 250 |
| 100 | 1.4.6.3.1.1 | Realizar casos de teste | 0.5d? | 2023-02-08 | 2023-02-08 | 95 | 2023-02-08 | 2023-02-08 | 0.5d? | 11d | Leonardo [50%] | 2h | 250 | 250 |
| 101 | 1.4.6.3.2 | **Testar RFS23** | 1d? | 2023-02-13 | 2023-02-14 |  | 2023-02-13 | 2023-02-14 | 1d? | 0d |  | 2h | 225 | 225 |
| 102 | 1.4.6.3.2.1 | Realizar casos de teste | 1d? | 2023-02-13 | 2023-02-14 | 97 | 2023-02-13 | 2023-02-14 | 1d? | 0d | Caio [25%] | 2h | 225 | 225 |

| ID | WBS | Task | Duration | Start | Finish | Predecessors | Baseline start | Baseline finish | Baseline duration | Total slack | Resources | Work | Cost | Baseline cost |
| --- | --- | --- | --- | --- | --- | --- | --- | --- | --- | --- | --- | --- | --- | --- |
| 103 | 1.5 | **Processo de monitoramento e controle** | 1.12d? | 2023-02-14 | 2023-02-15 |  | 2023-02-14 | 2023-02-15 | 1.12d? | 0d |  | 9h | 1,100 | 1,100 |
| 104 | 1.5.1 | Acompanhar o projeto | 0.62d? | 2023-02-14 | 2023-02-14 | 102 | 2023-02-14 | 2023-02-14 | 0.62d? | 0d | Luigi | 5h | 600 | 600 |
| 105 | 1.5.2 | Registro de bugs | 0.5d? | 2023-02-14 | 2023-02-15 | 104 | 2023-02-14 | 2023-02-15 | 0.5d? | 0d | Leonardo | 4h | 500 | 500 |
| 106 | 1.6 | **Fase de fechamento** | 4.62d? | 2023-02-15 | 2023-02-21 |  | 2023-02-15 | 2023-02-21 | 4.62d? | 0d |  | 28h | 3,200 | 3,200 |
| 107 | 1.6.1 | Testes em massa | 1.25d? | 2023-02-15 | 2023-02-16 | 105 | 2023-02-15 | 2023-02-16 | 1.25d? | 0d | Caio | 10h | 1,100 | 1,100 |
| 108 | 1.6.2 | Relatório de retrospectiva | 0.62d? | 2023-02-16 | 2023-02-17 | 107 | 2023-02-16 | 2023-02-17 | 0.62d? | 0d | Leonardo | 5h | 600 | 600 |
| 109 | 1.6.3 | Documento de publicação/entrega | 0.5d? | 2023-02-17 | 2023-02-17 | 108 | 2023-02-17 | 2023-02-17 | 0.5d? | 0d | Luigi | 4h | 500 | 500 |
| 110 | 1.6.4 | Lista de dificuldades e melhorias | 1.25d? | 2023-02-17 | 2023-02-20 | 109 | 2023-02-17 | 2023-02-20 | 1.25d? | 0d | Vinicius [50%] | 5h | 550 | 550 |
| 111 | 1.6.5 | Relatório de conclusão | 1d? | 2023-02-20 | 2023-02-21 | 110 | 2023-02-20 | 2023-02-21 | 1d? | 0d | Caio [50%] | 4h | 450 | 450 |
| 112 | 1.7 | **Processo controle de mudanças** | 1.88d? | 2023-02-21 | 2023-02-23 |  | 2023-02-21 | 2023-02-23 | 1.88d? | 0d |  | 15h | 1,600 | 1,600 |
| 113 | 1.7.1 | Realizar correções | 1.88d? | 2023-02-21 | 2023-02-23 | 111 | 2023-02-21 | 2023-02-23 | 1.88d? | 0d | Luigi | 15h | 1,600 | 1,600 |
